# Gantt_LOG650_G20_Rune_110

Schedule from MS Project XML, 2026-01-12 to 2026-06-01, status date 2026-03-10, A marks actual dates.

## Calendars

- Standard: Mon-Fri 08:00-12:00, 13:00-17:00; Sat-Sun off.

## Schedule

| ID | WBS | Task | Type | Duration | Start | Finish | Predecessors | Complete | Remaining | Baseline start | Baseline finish | Baseline duration | Total slack | Free slack |
| --- | --- | --- | --- | --- | --- | --- | --- | --- | --- | --- | --- | --- | --- | --- |
| 1 | 1 | **LOG650 G20 Rune — 110-sentraler: kapasitetsstyring og bemanningsdimensjonering** |  | 101d? | 2026-01-12 A | 2026-06-01 |  | 36% | 64.42d? | 2026-01-12 | 2026-05-28 | 99d? | 0d |  |
| 2 | 1.1 | **FASE 1 — Initiering** |  | 40d? | 2026-01-12 A | 2026-03-07 A |  | 100% |  | 2026-01-12 | 2026-03-07 | 40d? |  |  |
| 3 | 1.1.1 | L0 — Proposal: problemstilling, metode, datagrunnlag, WBS |  | 40d? | 2026-01-12 A | 2026-03-07 A |  | 100% |  | 2026-01-12 | 2026-03-07 | 40d? |  |  |
| 4 | 1.1.2 | M1 — Godkjent proposal | milestone | 0d? | 2026-03-07 A | 2026-03-07 A | 3 | 100% |  | 2026-03-07 | 2026-03-07 |  |  |  |
| 5 | 1.2 | **FASE 2 — Planlegging** |  | 4d? | 2026-03-07 A | 2026-03-12 |  | 55% | 2.27d? | 2026-03-07 | 2026-03-12 | 5d? |  |  |
| 6 | 1.2.1 | L1 — Avklart problemstilling, mal og avgrensninger | milestone | 0d? | 2026-03-07 A | 2026-03-07 A | 4 | 100% |  | 2026-03-07 | 2026-03-07 |  |  |  |
| 7 | 1.2.2 | L2 — Modellvalg: Erlang-C (M/M/c) identifisert og begrunnet | milestone | 0d? | 2026-03-07 A | 2026-03-07 A | 6 | 100% |  | 2026-03-07 | 2026-03-07 |  |  |  |
| 8 | 1.2.3 | L3 — Litteratursok: planlegging (sokestrategi, databaser, avgrensning) |  | 4d | 2026-03-09 A | 2026-03-12 | 7 | 50% | 2d | 2026-03-09 | 2026-03-12 | 4d | 57d |  |
| 9 | 1.2.4 | L4 — Dataplan: datakilder, variabler, kvalitet, tilgangsstatus |  | 3d | 2026-03-09 A | 2026-03-11 | 7 | 67% | 1d | 2026-03-09 | 2026-03-11 | 3d | 58d |  |
| 10 | 1.2.5 | L5 — Godkjent prosjektstyringsplan (dette dokumentet) |  | 3d | 2026-03-09 A | 2026-03-11 | 7 | 67% | 1d | 2026-03-09 | 2026-03-11 | 3d | 1d | 0d |
| 11 | 1.2.6 | L6 — MS Project Gantt-diagram med referanseplan (baseline) |  | 1d | 2026-03-12 | 2026-03-12 | 10 |  |  | 2026-03-12 | 2026-03-12 | 1d | 1d | 0d |
| 12 | 1.2.7 | M2 — Godkjent prosjektplan + Gantt med referanseplan | milestone | 0d? | 2026-03-12 | 2026-03-12 | 11 |  |  | 2026-03-12 | 2026-03-12 |  | 1d | 0d |
| 13 | 1.3 | **FASE 3 — Gjennomforing** |  | 40d? | 2026-03-13 | 2026-05-07 |  |  |  | 2026-03-13 | 2026-05-07 | 40d? |  |  |
| 14 | 1.3.1 | L7 — Rapportskjelett + introduksjon og problemstilling v1 |  | 2d | 2026-03-13 | 2026-03-16 | 12 |  |  | 2026-03-13 | 2026-03-16 | 2d | 55d | 0d |
| 15 | 1.3.2 | L8 – Datainnhenting: LEO/BRIS-data 2020–2025, DSB-årsrapporter, SSB-befolkningsdata; datavalidering og rådatastruktur |  | 3d | 2026-03-13 | 2026-03-17 | 12 |  |  | 2026-03-13 | 2026-03-17 | 3d | 1d | 0d |
| 16 | 1.3.3 | L8b — ROS/beredskapsanalyse-gjennomgang: dokumentanalyse av dimensjoneringsgrunnlag |  | 3d | 2026-03-13 | 2026-03-17 | 12 |  |  | 2026-03-13 | 2026-03-17 | 3d | 54d |  |
| 17 | 1.3.4 | M3 — Rapportskjelett + intro v1 klar | milestone | 0d? | 2026-03-16 | 2026-03-16 | 14 |  |  | 2026-03-16 | 2026-03-16 |  | 55d |  |
| 18 | 1.3.5 | L8c – Eksplorativ dataanalyse (EDA): belastningsmonstre per skift og time, hendelsestypefordeling, Poisson-test på ankomstprosess |  | 5d | 2026-03-18 | 2026-03-24 | 15 |  |  | 2026-03-18 | 2026-03-24 | 5d | 1d | 0d |
| 19 | 1.3.6 | L9 — Parameterestimering: ankomstrate (lambda) og haandteringstid (mu) per skiftperiode |  | 3d | 2026-03-25 | 2026-03-27 | 18 |  |  | 2026-03-25 | 2026-03-27 | 3d | 1d | 0d |
| 20 | 1.3.7 | M4 — Data innhentet, validert og EDA ferdig | milestone | 0d? | 2026-03-24 | 2026-03-24 | 18 |  |  | 2026-03-24 | 2026-03-24 |  | 49d |  |
| 21 | 1.3.8 | L10 — Erlang-C modellering: bemanningsanbefaling per skiftperiode med VL-korreksjon |  | 3d | 2026-03-30 | 2026-04-01 | 19 |  |  | 2026-03-30 | 2026-04-01 | 3d | 1d | 0d |
| 22 | 1.3.9 | L11 – Modellvalidering: kontrollere at Erlang-C-resultatene gjenspeiler målt belastning; sammenligning modell vs. observert kø/ventetid |  | 3d | 2026-04-02 | 2026-04-06 | 21 |  |  | 2026-04-02 | 2026-04-06 | 3d | 1d | 0d |
| 23 | 1.3.10 | L11b – Sensitivitetsanalyse: effekt av endringer i ankomstrate, håndteringstid, bemanning og servicekrav; ring-flom som ekstremscenario |  | 3d | 2026-04-07 | 2026-04-09 | 22 |  |  | 2026-04-07 | 2026-04-09 | 3d | 1d | 0d |
| 24 | 1.3.11 | L12 — Teorikapittel: koeteori, Erlang-C, kapasitetsstyring i beredskapsoperative systemer |  | 15d | 2026-03-13 | 2026-04-02 | 12 |  |  | 2026-03-13 | 2026-04-02 | 15d | 21d | 20d |
| 25 | 1.3.12 | M5 — Erlang-C modell implementert og validert | milestone | 0d? | 2026-04-09 | 2026-04-09 | 23 |  |  | 2026-04-09 | 2026-04-09 |  | 37d |  |
| 26 | 1.3.13 | L13 — Benchmarking: modellanbefaling vs. faktisk bemanning, alle 12 norske 110-sentraler |  | 5d? | 2026-04-10 | 2026-04-16 | 23 |  |  | 2026-04-10 | 2026-04-16 | 5d? | 1d | 0d |
| 27 | 1.3.14 | L14 — Generaliseringsanalyse: hendelsesvolum, innbyggertall og areal som prediktorer |  | 5d | 2026-04-17 | 2026-04-23 | 26 |  |  | 2026-04-17 | 2026-04-23 | 5d | 1d | 0d |
| 28 | 1.3.15 | L15 — Resultater og diskusjon: rapportutkast inkl. operative saertrekk og modellbegrensninger |  | 5d? | 2026-04-24 | 2026-04-30 | 27 |  |  | 2026-04-24 | 2026-04-30 | 5d? | 1d | 0d |
| 29 | 1.3.16 | L16 — Godkjent hoved-utkast + peer review (skriftlig tilbakemelding til annen gruppe) |  | 5d | 2026-05-01 | 2026-05-07 | 28, 24 |  |  | 2026-05-01 | 2026-05-07 | 5d | 1d | 0d |
| 30 | 1.3.17 | M6 — Godkjent hoved-utkast + peer review gjennomfart | milestone | 0d? | 2026-05-07 | 2026-05-07 | 29 |  |  | 2026-05-07 | 2026-05-07 |  | 1d | 0d |

Notes:
- 3: Innlevert 7. mars 2026. Avventer formell godkjenning.
- 4: Frist: 15. mars 2026. Krav: C-niva.
- 6: Fullfort 7. mars 2026.
- 7: Fullfort 7. mars 2026.
- 8: Litteraturliste Excel opprettet 8. mars 2026.
- 9: Dataplan inkludert i prosjektstyringsplan seksjon 3.7.
- 10: Plan v1.4 — 467 linjer. Inkluderer WBS, risiko, dataplan, Gantt-oversikt.
- 11: XML-fil generert 8. mars 2026. Importer i MS Project og sett baseline.
- 12: Frist: 15. mars 2026. Krav: C-niva.
- 14: Uke 12 (16.-22. mars). Mal fra HiMolde.
- 15: Uke 12. Datainnhenting og validering av rådata.
- 16: Uke 12-13. Kritisk gjennomgang: dimensjonerende hendelser, forutsetninger, sammenligning med LEO/BRIS.
- 17: Frist: 22. mars 2026. Intern milepael.
- 18: Uke 12-13. Kritisk sti. EDA, Poisson-test, toppbelastning, samtidige hendelser.
- 19: Uke 13. Avhenger av L8c (EDA). Python: scipy, pandas.
- 20: Frist: 29. mars 2026. Intern milepael.
- 21: Uke 14. c_effektiv = c_total - 1. Python-implementasjon.
- 22: Uke 14-15. Poisson goodness-of-fit, ring-flom som sensitivitetscase.
- 23: Uke 15. Ring-flom som ekstremscenario. Avhenger av L11.
- 24: Uke 14-15. Kan parallellkjores med L11. APA 7th norsk.
- 25: Frist: 10. april 2026. Intern milepael.
- 26: Uke 15. DSB-aarsrapporter. Standardisert mot per-innbygger og per-hendelse.
- 27: Uke 15-16. Nasjonal dimensjoneringsmodell-ambisjon. Omfang tilpasses tilgjengelige data.
- 28: Uke 16. Beredskapsperspektiv: lav utnyttelse ≠ overbemanning.
- 29: Uke 17-18 (20. april - 3. mai). Obligatorisk del av arbeidskrav M6.
- 30: Frist: slutten av april 2026. Krav: C-niva.

| ID | WBS | Task | Type | Duration | Start | Finish | Predecessors | Baseline start | Baseline finish | Baseline duration | Total slack | Free slack | Constraint |
| --- | --- | --- | --- | --- | --- | --- | --- | --- | --- | --- | --- | --- | --- |
| 31 | 1.4 | **FASE 4 — Avslutning** |  | 17d? | 2026-05-08 | 2026-06-01 |  | 2026-05-08 | 2026-05-21 | 10d? |  |  |  |
| 32 | 1.4.1 | L17 — Ferdigstilt rapport inkl. kode pa GitHub |  | 15d | 2026-05-08 | 2026-05-28 | 30 | 2026-05-08 | 2026-05-28 | 15d | 1d | 0d |  |
| 33 | 1.4.2 | M7 — Ferdigstilt rapport innlevert | milestone | 0d? | 2026-05-28 | 2026-05-28 | 32 | 2026-05-28 | 2026-05-28 |  | 1d |  |  |
| 34 | 1.4.3 | L18 — Muntlig eksamen |  | 1d | 2026-06-01 | 2026-06-01 | 33 | 2026-05-28 | 2026-05-28 |  | 0d |  | start no earlier than 2026-06-01 |

Notes:
- 32: Uke 19-22 (4. - 31. mai). Sluttlakkering, vedlegg, kode-repo.
- 33: Frist: 31. mai 2026. Krav: B-niva. Rapport + kode pa GitHub.
- 34: Tidlig juni 2026. Krav: B-niva.
